# Lịch trình sách thiếu nhi

How a schedule from MS Project changed from version to version. A marks actual dates.

## Version 1 (saved 2025-09-27, file Advanced Tracking A_Start.mpp)

| ID | WBS | Task | Duration | Start | Finish | Predecessors | Total float | Constraint |
| --- | --- | --- | --- | --- | --- | --- | --- | --- |
| 1 | 1 | **Cuộc họp của ban biên tập** | 60.12d | 2015-04-13 08:00 | 2015-07-06 09:00 |  | 103.75d |  |
| 2 |  | Editorial staff meeting 1 | 1h | 2015-04-13 08:00 | 2015-04-13 09:00 |  | 163.75d | start no earlier than 2015-04-13 08:00 |
| 3 |  | Editorial staff meeting 2 | 1h | 2015-04-20 08:00 | 2015-04-20 09:00 |  | 158.75d | start no earlier than 2015-04-20 08:00 |
| 4 |  | Editorial staff meeting 3 | 1h | 2015-04-27 08:00 | 2015-04-27 09:00 |  | 153.75d | start no earlier than 2015-04-27 08:00 |
| 5 |  | Editorial staff meeting 4 | 1h | 2015-05-04 08:00 | 2015-05-04 09:00 |  | 148.75d | start no earlier than 2015-05-04 08:00 |
| 6 |  | Editorial staff meeting 5 | 1h | 2015-05-11 08:00 | 2015-05-11 09:00 |  | 143.75d | start no earlier than 2015-05-11 08:00 |
| 7 |  | Editorial staff meeting 6 | 1h | 2015-05-18 08:00 | 2015-05-18 09:00 |  | 138.75d | start no earlier than 2015-05-18 08:00 |
| 8 |  | Editorial staff meeting 7 | 1h | 2015-05-25 08:00 | 2015-05-25 09:00 |  | 133.75d | start no earlier than 2015-05-25 08:00 |
| 9 |  | Editorial staff meeting 8 | 1h | 2015-06-01 08:00 | 2015-06-01 09:00 |  | 128.75d | start no earlier than 2015-06-01 08:00 |
| 10 |  | Editorial staff meeting 9 | 1h | 2015-06-08 08:00 | 2015-06-08 09:00 |  | 123.75d | start no earlier than 2015-06-08 08:00 |
| 11 |  | Editorial staff meeting 10 | 1h | 2015-06-15 08:00 | 2015-06-15 09:00 |  | 118.75d | start no earlier than 2015-06-15 08:00 |
| 12 |  | Editorial staff meeting 11 | 1h | 2015-06-22 08:00 | 2015-06-22 09:00 |  | 113.75d | start no earlier than 2015-06-22 08:00 |
| 13 |  | Editorial staff meeting 12 | 1h | 2015-06-29 08:00 | 2015-06-29 09:00 |  | 108.75d | start no earlier than 2015-06-29 08:00 |
| 14 |  | Editorial staff meeting 13 | 1h | 2015-07-06 08:00 | 2015-07-06 09:00 |  | 103.75d | start no earlier than 2015-07-06 08:00 |
| 15 | 2 | **Sự mua lại** | 35.5d | 2015-04-06 08:00 | 2015-05-25 12:00 |  | 0d |  |
| 16 |  | Đã nhận được bản thảo | 0d | 2015-04-06 08:00 | 2015-04-06 08:00 |  | 0d |  |
| 17 |  | Chỉnh sửa nội dung | 15d | 2015-04-06 08:00 | 2015-04-30 10:00 | 16 | 0d |  |
| 18 |  | Đánh giá nghệ thuật gốc | 10.25d | 2015-04-23 10:00 | 2015-05-07 12:00 | 17FS-5d | 0d |  |
| 19 |  | Đánh giá của tác giả về nội dung chỉnh sửa | 12d | 2015-05-07 13:00 | 2015-05-25 12:00 | 17, 18 | 0d |  |
| 20 |  | Bàn giao cho Ban biên tập | 0d | 2015-05-25 12:00 | 2015-05-25 12:00 | 19 | 0d |  |
| 21 | 3 | **Biên tập** | 29.12d | 2015-05-25 13:00 | 2015-07-03 14:00 | 15 | 0d |  |
| 22 |  | Tổ chức bản thảo để biên tập | 5.12d | 2015-05-25 13:00 | 2015-06-01 14:00 |  | 0d |  |
| 23 |  | Biên tập bản sao | 11.25d | 2015-06-01 14:00 | 2015-06-16 16:00 | 22 | 0d |  |
| 24 |  | Đánh giá của tác giả về bản chỉnh sửa | 10d | 2015-06-16 16:00 | 2015-06-30 16:00 | 23 | 0d |  |
| 25 |  | Bản sao biên tập incorp | 5.12d | 2015-06-26 11:00 | 2015-07-03 14:00 | 24FS-2.5% | 0d |  |
| 26 |  | Bàn giao cho sản xuất | 0d | 2015-07-03 14:00 | 2015-07-03 14:00 | 25 | 0d |  |
| 27 | 4 | **Thiết kế và Sản xuất** | 58.25d | 2015-07-03 14:00 | 2015-09-23 16:00 | 21 | 0d |  |
| 28 |  | Thiết lập trang | 15d | 2015-07-03 14:00 | 2015-07-24 14:00 |  | 0d |  |
| 29 |  | Thiết kế minh họa nội thất | 15.25d | 2015-07-03 14:00 | 2015-07-24 16:00 | 28SS | 0d |  |
| 30 | 4.3 | **Đánh giá trang 1** | 30d | 2015-07-24 16:00 | 2015-09-04 16:00 | 29 | 0d |  |
| 31 |  | Hiệu đính và lập chỉ mục | 10d | 2015-07-24 16:00 | 2015-08-07 16:00 |  | 0d | start no earlier than 2015-07-17 08:00 |
| 32 |  | Kết hợp đánh giá Trang 1 | 10d | 2015-08-07 16:00 | 2015-08-21 16:00 | 31 | 0d |  |
| 33 |  | Gửi các trang đã được kiểm tra đến Sản xuất | 0d | 2015-08-21 16:00 | 2015-08-21 16:00 | 32 | 0d |  |
| 34 |  | Nhập sửa trang và chỉ mục | 5d | 2015-08-21 16:00 | 2015-08-28 16:00 | 33 | 0d |  |
| 35 |  | Thiết kế bìa | 5d | 2015-08-28 16:00 | 2015-09-04 16:00 | 34 | 0d |  |
| 36 | 4.4 | **Đánh giá trang 2** | 13d | 2015-09-04 16:00 | 2015-09-23 16:00 |  | 0d |  |
| 37 |  | Bằng chứng và đánh giá | 6.5d | 2015-09-04 16:00 | 2015-09-15 11:00 | 35 | 0d |  |
| 38 |  | Gửi các trang đã được kiểm tra đến Sản xuất | 0d | 2015-09-15 11:00 | 2015-09-15 11:00 | 37 | 0d |  |
| 39 |  | Đánh giá cuối cùng | 5d | 2015-09-16 16:00 | 2015-09-23 16:00 | 38 | 0d |  |
| 40 | 4.5 | **Trang web đồng hành của sách thiết kế** | 10d | 2015-09-04 16:00 | 2015-09-18 16:00 | 30 | 3d |  |
| 41 |  | Tạo mô hình | 4.5d | 2015-09-04 16:00 | 2015-09-16 16:00 |  | 3d |  |
| 42 |  | Đánh giá với tác giả | 2d | 2015-09-16 16:00 | 2015-09-18 16:00 | 41 | 3d |  |
| 43 | 5 | **Chuẩn bị màu và in ấn** | 46d | 2015-09-23 16:00 | 2015-11-26 16:00 | 40 | 0d |  |
| 44 |  | Gửi đến nhà màu | 1d | 2015-09-23 16:00 | 2015-09-28 16:00 | 36 | 0d |  |
| 45 |  | Tạo bằng chứng | 10d | 2015-09-28 16:00 | 2015-10-12 16:00 | 44 | 0d |  |
| 46 |  | In và gửi | 30d | 2015-10-15 16:00 | 2015-11-26 16:00 | 45FS+3d | 0d |  |
| 47 | 6 | **Chuẩn bị ra mắt sách** | 22d | 2015-09-28 16:00 | 2015-10-28 16:00 |  | 21d |  |
| 48 |  | Kế hoạch ra mắt | 5d | 2015-09-28 16:00 | 2015-10-05 16:00 | 44 | 21d |  |
| 49 |  | Chỉ định các thành viên nhóm ra mắt | 1d | 2015-10-05 16:00 | 2015-10-06 16:00 | 48 | 21d |  |
| 50 |  | Hoàn thành bảng câu hỏi của tác giả | 5d | 2015-10-06 16:00 | 2015-10-13 16:00 | 49 | 21d |  |
| 51 |  | Lên lịch phỏng vấn tác giả | 1d | 2015-10-13 16:00 | 2015-10-14 16:00 | 50 | 21d |  |
| 52 |  | Design and order marketing material | 10d | 2015-10-14 16:00 | 2015-10-28 16:00 | 51 | 21d |  |

## Version 2 (saved 2025-09-27, file Advanced Tracking B_Start.mpp)

Last finish stays 2015-11-26. Complete tasks 0 → 4.

Changed:

| ID | Task | Start | Finish | Complete | Total float | Other |
| --- | --- | --- | --- | --- | --- | --- |
| 1 | **Cuộc họp của ban biên tập** | 2015-04-13 08:00 A |  | 0% → 15% |  |  |
| 2 | Editorial staff meeting 1 | 2015-04-13 08:00 A | 2015-04-13 09:00 A | 0% → 100% | 163.75d → none | resources Lê Vũ Kiệt; Nguyễn Thị Thanh Hiền; Hoàng Thanh Trà; Ngô Thảo Vy [50%] → Lê Vũ Kiệt; Nguyễn Thị Bạch Viên; Hoàng Thanh Trà; Vũ Bá Lực [50%] |
| 3 | Editorial staff meeting 2 | 2015-04-20 08:00 A | 2015-04-20 09:00 A | 0% → 100% | 158.75d → none | resources Lê Vũ Kiệt; Nguyễn Thị Thanh Hiền; Hoàng Thanh Trà; Ngô Thảo Vy [50%] → Lê Vũ Kiệt; Nguyễn Thị Bạch Viên; Hoàng Thanh Trà; Vũ Bá Lực [50%] |
| 4 | Editorial staff meeting 3 |  |  |  |  | resources Lê Vũ Kiệt; Nguyễn Thị Thanh Hiền; Hoàng Thanh Trà; Ngô Thảo Vy [50%] → Lê Vũ Kiệt; Nguyễn Thị Bạch Viên; Hoàng Thanh Trà; Vũ Bá Lực [50%] |
| 5 | Editorial staff meeting 4 |  |  |  |  | resources Lê Vũ Kiệt; Nguyễn Thị Thanh Hiền; Hoàng Thanh Trà; Ngô Thảo Vy [50%] → Lê Vũ Kiệt; Nguyễn Thị Bạch Viên; Hoàng Thanh Trà; Vũ Bá Lực [50%] |
| 6 | Editorial staff meeting 5 |  |  |  |  | resources Lê Vũ Kiệt; Nguyễn Thị Thanh Hiền; Hoàng Thanh Trà; Ngô Thảo Vy [50%] → Lê Vũ Kiệt; Nguyễn Thị Bạch Viên; Hoàng Thanh Trà; Vũ Bá Lực [50%] |
| 7 | Editorial staff meeting 6 |  |  |  |  | resources Lê Vũ Kiệt; Nguyễn Thị Thanh Hiền; Hoàng Thanh Trà; Ngô Thảo Vy [50%] → Lê Vũ Kiệt; Nguyễn Thị Bạch Viên; Hoàng Thanh Trà; Vũ Bá Lực [50%] |
| 8 | Editorial staff meeting 7 |  |  |  |  | resources Lê Vũ Kiệt; Nguyễn Thị Thanh Hiền; Hoàng Thanh Trà; Ngô Thảo Vy [50%] → Lê Vũ Kiệt; Nguyễn Thị Bạch Viên; Hoàng Thanh Trà; Vũ Bá Lực [50%] |
| 9 | Editorial staff meeting 8 |  |  |  |  | resources Lê Vũ Kiệt; Nguyễn Thị Thanh Hiền; Hoàng Thanh Trà; Ngô Thảo Vy [50%] → Lê Vũ Kiệt; Nguyễn Thị Bạch Viên; Hoàng Thanh Trà; Vũ Bá Lực [50%] |
| 10 | Editorial staff meeting 9 |  |  |  |  | resources Lê Vũ Kiệt; Nguyễn Thị Thanh Hiền; Hoàng Thanh Trà; Ngô Thảo Vy [50%] → Lê Vũ Kiệt; Nguyễn Thị Bạch Viên; Hoàng Thanh Trà; Vũ Bá Lực [50%] |
| 11 | Editorial staff meeting 10 |  |  |  |  | resources Lê Vũ Kiệt; Nguyễn Thị Thanh Hiền; Hoàng Thanh Trà; Ngô Thảo Vy [50%] → Lê Vũ Kiệt; Nguyễn Thị Bạch Viên; Hoàng Thanh Trà; Vũ Bá Lực [50%] |
| 12 | Editorial staff meeting 11 |  |  |  |  | resources Lê Vũ Kiệt; Nguyễn Thị Thanh Hiền; Hoàng Thanh Trà; Ngô Thảo Vy [50%] → Lê Vũ Kiệt; Nguyễn Thị Bạch Viên; Hoàng Thanh Trà; Vũ Bá Lực [50%] |
| 13 | Editorial staff meeting 12 |  |  |  |  | resources Lê Vũ Kiệt; Nguyễn Thị Thanh Hiền; Hoàng Thanh Trà; Ngô Thảo Vy [50%] → Lê Vũ Kiệt; Nguyễn Thị Bạch Viên; Hoàng Thanh Trà; Vũ Bá Lực [50%] |
| 14 | Editorial staff meeting 13 |  |  |  |  | resources Lê Vũ Kiệt; Nguyễn Thị Thanh Hiền; Hoàng Thanh Trà; Ngô Thảo Vy [50%] → Lê Vũ Kiệt; Nguyễn Thị Bạch Viên; Hoàng Thanh Trà; Vũ Bá Lực [50%] |
| 15 | **Sự mua lại** | 2015-04-06 08:00 A |  | 0% → 58% |  |  |
| 16 | Đã nhận được bản thảo | 2015-04-06 08:00 A | 2015-04-06 08:00 A | 0% → 100% | 0d → none |  |
| 17 | Chỉnh sửa nội dung | 2015-04-06 08:00 A | 2015-04-30 10:00 A | 0% → 100% | 0d → none |  |
| 18 | Đánh giá nghệ thuật gốc | 2015-04-23 10:00 A |  | 0% → 66% |  | resources Hoàng Thanh Trà; Nguyễn Thị Bạch Viên → Hoàng Thanh Trà; Ngô Thảo Vy |
| 22 | Tổ chức bản thảo để biên tập |  |  |  |  | resources Hoàng Thanh Trà; Ngô Thảo Vy [50%] → Hoàng Thanh Trà; Vũ Bá Lực [50%] |
| 25 | Bản sao biên tập incorp |  |  |  |  | resources Lê Vũ Kiệt; Ngô Thảo Vy [50%] → Lê Vũ Kiệt; Vũ Bá Lực [50%] |
| 28 | Thiết lập trang |  |  |  |  | resources Nguyễn Thị Bạch Viên → Ngô Thảo Vy |
| 29 | Thiết kế minh họa nội thất |  |  |  |  | resources Nguyễn Hữu Hoàng; Hoàng Thanh Trà → Nguyễn Thị Thanh Hiền; Hoàng Thanh Trà |
| 32 | Kết hợp đánh giá Trang 1 |  |  |  |  | resources Hoàng Thanh Trà; Ngô Thảo Vy [50%] → Hoàng Thanh Trà; Vũ Bá Lực [50%] |
| 34 | Nhập sửa trang và chỉ mục |  |  |  |  | resources Nguyễn Thị Bạch Viên; Ngô Thảo Vy [50%] → Ngô Thảo Vy; Vũ Bá Lực [50%] |
| 35 | Thiết kế bìa |  |  |  |  | resources Nguyễn Hữu Hoàng → Nguyễn Thị Thanh Hiền |
| 39 | Đánh giá cuối cùng |  |  |  |  | resources Nguyễn Thị Bạch Viên; Hoàng Thanh Trà [50%]; Lê Vũ Kiệt [50%]; Nguyễn Minh Thoại [20 copies] → Ngô Thảo Vy; Hoàng Thanh Trà [50%]; Lê Vũ Kiệt [50%]; Bản in thử galley đóng bìa [20 copies] |
| 41 | Tạo mô hình |  |  |  |  | resources Nguyễn Hữu Hoàng; Hoàng Thanh Trà → Nguyễn Thị Thanh Hiền; Hoàng Thanh Trà |
| 42 | Đánh giá với tác giả |  |  |  |  | resources Nguyễn Hữu Hoàng; Trần Quốc Kiệt; Nguyễn Quốc Khánh [0.1%]; Ngô Thảo Vy [50%] → Nguyễn Thị Thanh Hiền; Trần Quốc Kiệt; Du lịch [0.1%]; Vũ Bá Lực [50%] |
| 46 | In và gửi |  |  |  |  | resources Trần Văn Lâm → Dịch vụ in ấn |
| 48 | Kế hoạch ra mắt |  |  |  |  | resources Lê Vũ Kiệt [50%]; Nguyễn Thị Bạch Viên → Lê Vũ Kiệt [50%]; Ngô Thảo Vy |
| 50 | Hoàn thành bảng câu hỏi của tác giả |  |  |  |  | resources Hoàng Thanh Trà; Trần Quốc Kiệt; Nguyễn Quốc Khánh [0.1%] → Hoàng Thanh Trà; Trần Quốc Kiệt; Du lịch [0.1%] |
| 52 | Thiết kế và đặt hàng tài liệu tiếp thị |  |  |  |  | was named Design and order marketing material |
